Schedule from OmniPlan.
Project start 2015-11-04

## Resources

| Resource | Group |
| --- | --- |
| Resource 1 | staff |
| Equipment 1 | equipment |
| Material 1 | material |
| Group 1 | group |
| 黄玉辉 | staff |
| 陈新存 | staff |
| 刘云鹏 | staff |
| 林思敏 | staff |

## Schedule

| ID | WBS | Task | Predecessors | Constraint | Resources | Work |
| --- | --- | --- | --- | --- | --- | --- |
| 1 | 1 | **并读新闻 iOS 2.0.0 开发计划** |  |  |  |  |
| 2 | 1.1 | **UI框架搭建** |  | start no earlier than 2015-12-10 |  |  |
| 3 | 1.1.1 | **生活方式** |  | start no earlier than 2015-12-14 |  |  |
| 4 | 1.1.1.1 | UIUX |  | start no earlier than 2015-12-10 | 黄玉辉 | 15h |
| 5 | 1.1.1.2 | 业务逻辑 | 4 | start no earlier than 2015-12-10 | 黄玉辉 | 15h |
| 6 | 1.1.1.3 | 测试周期 | 5 | start no earlier than 2015-12-10 | 黄玉辉 | 15h |
| 7 | 1.1.2 | **个人中心** | 3 | start no earlier than 2015-12-10 |  |  |
| 8 | 1.1.2.1 | UIUX |  | start no earlier than 2015-12-10 | 黄玉辉 | 15h |
| 9 | 1.1.2.2 | 业务逻辑 | 8 | start no earlier than 2015-12-10 | 黄玉辉 | 15h |
| 10 | 1.1.2.3 | 测试周期 | 9 | start no earlier than 2015-12-10 | 黄玉辉 | 15h |
| 11 | 1.2 | **新闻收藏** |  | start no earlier than 2015-12-14 |  |  |
| 12 | 1.2.1 | UIUX |  | start no earlier than 2015-12-10 | 林思敏 | 15h |
| 13 | 1.2.2 | 测试周期 | 12 | start no earlier than 2015-12-10 | 林思敏 | 15h |
| 14 | 1.3 | **集市** | 27 |  |  |  |
| 15 | 1.3.1 | UIUX |  | start no earlier than 2015-12-10 | 林思敏 | 15h |
| 16 | 1.3.2 | 测试周期 | 15 | start no earlier than 2015-12-10 | 林思敏 | 7.5h |
| 17 | 1.4 | **系统设置** |  |  |  |  |
| 18 | 1.4.1 | UIUX |  | start no earlier than 2015-12-14 | 陈新存 | 7.5h |
| 19 | 1.4.2 | 测试周期 | 18 | start no earlier than 2015-12-10 | 陈新存 |  |
| 20 | 1.5 | **直播新闻推送优化** | 17 | start no earlier than 2015-12-10 |  |  |
| 21 | 1.5.1 | UIUX |  | start no earlier than 2015-12-10 | 陈新存 | 3.75h |
| 22 | 1.5.2 | 测试周期 | 21 | start no earlier than 2015-12-10 | 陈新存 |  |
| 23 | 1.6 | **并友** |  |  |  |  |
| 24 | 1.6.1 | **并友** |  | start no earlier than 2015-12-10 |  |  |
| 25 | 1.6.1.1 | UIUX |  | start no earlier than 2015-12-14 | 刘云鹏 | 15h |
| 26 | 1.6.1.2 | 测试周期 | 25 | start no earlier than 2015-12-10 | 刘云鹏 |  |

| ID | WBS | Task | Predecessors | Constraint | Resources | Work |
| --- | --- | --- | --- | --- | --- | --- |
| 27 | 1.6.2 | **通讯录** | 11 | start no earlier than 2015-12-10 |  |  |
| 28 | 1.6.2.1 | UIUX |  | start no earlier than 2015-12-10 | 林思敏 | 15h |
| 29 | 1.6.2.2 | 测试周期 | 28 | start no earlier than 2015-12-10 | 林思敏 | 15h |
| 30 | 1.7 | **文章详情** |  |  |  |  |
| 31 | 1.7.1 | **生活方式** | 24 | start no earlier than 2015-12-10 |  |  |
| 32 | 1.7.1.1 | UIUX |  | start no earlier than 2015-12-10 | 刘云鹏 | 7.5h |
| 33 | 1.7.1.2 | 业务逻辑 | 32 | start no earlier than 2015-12-10 | 刘云鹏 | 7.5h |
| 34 | 1.7.1.3 | 测试周期 | 33 | start no earlier than 2015-12-10 | 刘云鹏 |  |
| 35 | 1.7.2 | **即时新闻** | 31 | start no earlier than 2015-12-10 |  |  |
| 36 | 1.7.2.1 | UIUX |  | start no earlier than 2015-12-10 | 刘云鹏 | 7.5h |
| 37 | 1.7.2.2 | 业务逻辑 | 36 | start no earlier than 2015-12-10 | 刘云鹏 | 7.5h |
| 38 | 1.7.2.3 | 测试周期 | 37 | start no earlier than 2015-12-10 | 刘云鹏 | 7.5h |
| 39 | 1.8 | **视频播放** | 35 |  |  |  |
| 40 | 1.8.1 | UIUX |  | start no earlier than 2015-12-10 | 刘云鹏 | 22.5h |
| 41 | 1.8.2 | 接口调试 | 40 | start no earlier than 2015-12-10 | 刘云鹏 | 7.5h |
| 42 | 1.8.3 | 业务逻辑 | 41 | start no earlier than 2015-12-10 | 刘云鹏 | 22.5h |
| 43 | 1.8.4 | 测试周期 | 42 | start no earlier than 2015-12-10 | 刘云鹏 | 7.5h |
| 44 | 1.9 | **百科词条** | 39 | start no earlier than 2015-12-10 |  |  |
| 45 | 1.9.1 | UIUX |  | start no earlier than 2015-12-10 | 刘云鹏 | 7.5h |
| 46 | 1.9.2 | 接口调试 | 45 | start no earlier than 2015-12-10 | 刘云鹏 | 7.5h |
| 47 | 1.9.3 | 业务逻辑 | 46 | start no earlier than 2015-12-10 | 刘云鹏 | 11.25h |
| 48 | 1.9.4 | 测试周期 | 47 | start no earlier than 2015-12-10 | 刘云鹏 |  |
| 49 | 1.10 | **生活方式** |  | start no earlier than 2015-12-10 |  |  |
| 50 | 1.10.1 | **精选文章列表** | 7 | start no earlier than 2015-12-10 |  |  |
| 51 | 1.10.1.1 | UIUX |  | start no earlier than 2015-12-10 | 黄玉辉 | 15h |
| 52 | 1.10.1.2 | 接口调试 | 51 | start no earlier than 2015-12-10 | 黄玉辉 | 7.5h |
| 53 | 1.10.1.3 | 业务逻辑 | 52 | start no earlier than 2015-12-10 | 黄玉辉 | 15h |
| 54 | 1.10.1.4 | 测试周期 | 53 | start no earlier than 2015-12-10 | 黄玉辉 | 15h |

| ID | WBS | Task | Predecessors | Constraint | Resources | Work |
| --- | --- | --- | --- | --- | --- | --- |
| 55 | 1.10.2 | **分类标签列表** | 20 | start no earlier than 2015-12-10 |  |  |
| 56 | 1.10.2.1 | UIUX |  | start no earlier than 2015-12-10 | 陈新存 | 7.5h |
| 57 | 1.10.2.2 | 业务逻辑 | 56 | start no earlier than 2015-12-10 | 陈新存 | 7.5h |
| 58 | 1.10.2.3 | 接口调试 | 57 | start no earlier than 2015-12-10 | 陈新存 | 7.5h |
| 59 | 1.10.2.4 | 测试周期 | 58 | start no earlier than 2015-12-10 | 陈新存 | 3.75h |
| 60 | 1.10.3 | **标签文章列表** | 14 | start no earlier than 2015-12-10 |  |  |
| 61 | 1.10.3.1 | UIUX |  | start no earlier than 2015-12-10 | 林思敏 | 15h |
| 62 | 1.10.3.2 | 接口调试 | 61 | start no earlier than 2015-12-10 | 林思敏 | 7.5h |
| 63 | 1.10.3.3 | 业务逻辑 | 62 | start no earlier than 2015-12-10 | 林思敏 | 22.5h |
| 64 | 1.10.3.4 | 测试周期 | 63 | start no earlier than 2015-12-10 | 林思敏 | 15h |
| 65 | 1.11 | **任务** | 55 |  |  |  |
| 66 | 1.11.1 | UIUX |  | start no earlier than 2015-12-10 | 陈新存 | 15h |
| 67 | 1.11.2 | 接口调试 | 66 | start no earlier than 2015-12-10 | 陈新存 | 15h |
| 68 | 1.11.3 | 业务逻辑 | 67 | start no earlier than 2015-12-10 | 陈新存 | 15h |
| 69 | 1.11.4 | 测试周期 | 68 | start no earlier than 2015-12-10 | 陈新存 | 15h |
| 70 | 1.12 | **新的启动引导页** | 65 | start no earlier than 2015-12-10 |  |  |
| 71 | 1.12.1 | UIUX |  | start no earlier than 2015-12-10 | 陈新存 | 15h |
| 72 | 1.12.2 | 测试周期 | 71 | start no earlier than 2015-12-10 | 陈新存 | 7.5h |
| 73 | 1.13 | **新浪微博SDK更新** | 70 | start no earlier than 2015-12-10 |  |  |
| 74 | 1.13.1 | UIUX |  | start no earlier than 2015-12-10 | 陈新存 | 15h |
| 75 | 1.13.2 | 测试周期 | 74 | start no earlier than 2015-12-10 | 陈新存 | 7.5h |
| 76 | 1.14 | **微博分享变更** | 44 | start no earlier than 2015-12-10 |  |  |
| 77 | 1.14.1 | 接口调试 |  | start no earlier than 2015-12-10 | 刘云鹏 | 3.75h |
| 78 | 1.14.2 | 测试周期 | 77 | start no earlier than 2015-12-10 | 刘云鹏 |  |
